# microsoft-project-how-to-create-your-project-plan-in-ms-project

Schedule from MS Project, 2016-10-06 to 2016-12-28, costs in ₫.

## Calendars

- Standard: Mon-Fri 08:00-12:00, 13:00-17:00; Sat-Sun off. Exceptions (off unless hours are given): 2016-10-13 (Columbus Day), 2016-11-11 (Veterans Day), 2016-11-27 (Thanksgiving Holiday), 2016-12-25 (Chrismas Day).

## Resources

| Resource | Group | Rate |
| --- | --- | --- |
| John | Analysis | 60 |
| Nelly | Analysis | 50 |
| David | Architect | 75 |
| Joe | Developers | 70 |
| Nick | Developers | 60 |
| Justin | Developers | 60 |
| Lisa | Developers | 40 |
| Richard | Testing | 50 |

## Schedule

| ID | WBS | Task | Duration | Start | Finish | Predecessors | Total slack | Free slack | Resources | Work | Cost |
| --- | --- | --- | --- | --- | --- | --- | --- | --- | --- | --- | --- |
| 1 | 1 | **Website Development** | 58d? | 2016-10-06 | 2016-12-28 |  | 0d |  |  | 1464h | 34,360 |
| 2 | 1.1 | **ANALYSIS** | 24d? | 2016-10-06 | 2016-11-09 |  | 1d | 0d |  | 328h | 19,360 |
| 3 | 1.1.1 | Main Page | 10d | 2016-10-06 | 2016-10-20 |  | 1d | 0d | John [50%] | 40h | 2,720 |
| 4 | 1.1.2 | Content Page #1 | 3d? | 2016-10-06 | 2016-10-10 |  | 1d | 0d | Nelly | 24h | 1,200 |
| 5 | 1.1.3 | Content Page #2 | 2d? | 2016-10-11 | 2016-10-12 | 4 | 1d | 0d | Nelly | 16h | 800 |
| 6 | 1.1.4 | Content Page #3 | 2d? | 2016-10-21 | 2016-10-24 | 3 | 1d | 0d | John | 16h | 1,120 |
| 7 | 1.1.5 | Author Page | 2d? | 2016-10-14 | 2016-10-17 | 5 | 1d | 0d | Nelly | 16h | 800 |
| 8 | 1.1.6 | Contact Page | 2d? | 2016-10-25 | 2016-10-26 | 6 | 1d | 0d | John | 16h | 1,120 |
| 9 | 1.1.7 | Search Page | 7d? | 2016-10-18 | 2016-10-27 | 7 | 1d | 0d | Nelly | 56h | 2,800 |
| 10 | 1.1.8 | Order Page | 6d? | 2016-10-27 | 2016-11-03 | 8 | 2d | 0d | John | 48h | 3,360 |
| 11 | 1.1.9 | Tracking Page | 4d? | 2016-11-04 | 2016-11-09 | 10 | 2d |  | John | 32h | 2,240 |
| 12 | 1.1.10 | Admin Page | 8d? | 2016-10-28 | 2016-11-08 | 9 | 1d |  | Nelly | 64h | 3,200 |
| 13 | 1.2 | **DESIGN** | 29d? | 2016-10-18 | 2016-11-28 |  | 13d | 0d |  | 200h | 15,000 |
| 14 | 1.2.1 | Main Page | 4d | 2016-10-21 | 2016-10-26 | 3, 15 | 27d | 0d | David | 32h | 2,400 |
| 15 | 1.2.2 | Content Page #1 | 2d | 2016-10-19 | 2016-10-20 | 4, 18 | 12d | 0d | David | 16h | 1,200 |
| 16 | 1.2.3 | Content Page #2 | 1d? | 2016-10-27 | 2016-10-27 | 5, 14 | 33d | 0d | David | 8h | 600 |
| 17 | 1.2.4 | Content Page #3 | 1d? | 2016-10-28 | 2016-10-28 | 6, 14, 16 | 33d | 0d | David | 8h | 600 |
| 18 | 1.2.5 | Author Page | 1d? | 2016-10-18 | 2016-10-18 | 7 | 11d | 0d | David | 8h | 600 |
| 19 | 1.2.6 | Contact Page | 1d? | 2016-11-04 | 2016-11-04 | 8 | 0d |  | David | 8h | 600 |
| 20 | 1.2.7 | Search Page | 4d | 2016-11-07 | 2016-11-10 | 9, 19 | 0d |  | David | 32h | 2,400 |
| 21 | 1.2.8 | Order Page | 3d | 2016-11-14 | 2016-11-16 | 10, 20 | 0d |  | David | 24h | 1,800 |
| 22 | 1.2.9 | Tracking Page | 3d | 2016-11-17 | 2016-11-21 | 11, 21 | 0d |  | David | 24h | 1,800 |
| 23 | 1.2.10 | Admin Page | 5d | 2016-11-22 | 2016-11-28 | 12, 22 | 0d |  | David | 40h | 3,000 |
| 24 | 1.3 | **DEVELOPMENT** | 45d? | 2016-10-19 | 2016-12-21 |  | 4d | 0d |  | 632h |  |
| 25 | 1.3.1 | Main Page | 12d | 2016-10-27 | 2016-11-14 | 14 | 27d | 0d |  | 96h |  |
| 26 | 1.3.2 | Content Page #1 | 1d | 2016-10-21 | 2016-10-21 | 15 | 41d | 0d |  | 48h |  |
| 27 | 1.3.3 | Content Page #2 | 4d? | 2016-10-28 | 2016-11-02 | 16 | 34d | 0d |  | 32h |  |
| 28 | 1.3.4 | Content Page #3 | 4d? | 2016-10-31 | 2016-11-03 | 17 | 33d | 0d |  | 32h |  |
| 29 | 1.3.5 | Author Page | 1d? | 2016-10-19 | 2016-10-19 | 18 | 14d | 0d |  | 24h |  |
| 30 | 1.3.6 | Contact Page | 3d? | 2016-11-07 | 2016-11-09 | 19 | 29d | 0d |  | 24h |  |
| 31 | 1.3.7 | Search Page | 14d | 2016-11-14 | 2016-12-01 | 20 | 14d | 0d |  | 112h |  |
| 32 | 1.3.8 | Order Page | 11d | 2016-11-17 | 2016-12-01 | 21 | 14d | 0d |  | 88h |  |
| 33 | 1.3.9 | Tracking Page | 5d | 2016-11-22 | 2016-11-28 | 22 | 17d | 0d |  | 40h |  |
| 34 | 1.3.10 | Admin Page | 17d | 2016-11-29 | 2016-12-21 | 23 | 0d |  |  | 136h |  |

| ID | WBS | Task | Type | Duration | Start | Finish | Predecessors | Total slack | Free slack | Work |
| --- | --- | --- | --- | --- | --- | --- | --- | --- | --- | --- |
| 35 | 1.4 | **TESTING** |  | 49d? | 2016-10-20 | 2016-12-28 |  | 0d |  | 176h |
| 36 | 1.4.1 | Main Page |  | 3d | 2016-11-15 | 2016-11-17 | 25 | 29d | 0d | 24h |
| 37 | 1.4.2 | Content Page #1 |  | 1d | 2016-10-24 | 2016-10-24 | 26 | 46d | 0d | 12h |
| 38 | 1.4.3 | Content Page #2 |  | 1d? | 2016-11-03 | 2016-11-03 | 27 | 38d | 0d | 8h |
| 39 | 1.4.4 | Content Page #3 |  | 1d? | 2016-11-04 | 2016-11-04 | 28 | 37d | 0d | 8h |
| 40 | 1.4.5 | Author Page |  | 1d? | 2016-10-20 | 2016-10-20 | 29 | 48d | 0d | 8h |
| 41 | 1.4.6 | Contact Page |  | 1d? | 2016-11-10 | 2016-11-10 | 30 | 33d | 0d | 8h |
| 42 | 1.4.7 | Search Page |  | 4d | 2016-12-02 | 2016-12-07 | 31 | 15d | 0d | 32h |
| 43 | 1.4.8 | Order Page |  | 3d | 2016-12-02 | 2016-12-06 | 32 | 16d | 0d | 24h |
| 44 | 1.4.9 | Tracking Page |  | 1.5d | 2016-11-29 | 2016-11-30 | 33 | 20.5d | 0d | 12h |
| 45 | 1.4.10 | Admin Page |  | 5d | 2016-12-22 | 2016-12-28 | 34 | 0d |  | 40h |
| 46 | 1.5 | **BUGFIX** |  | 49d? | 2016-10-20 | 2016-12-28 |  | 0d |  | 128h |
| 47 | 1.5.1 | Main Page |  | 1d? | 2016-11-17 | 2016-11-17 | 36FF | 29d |  | 16h |
| 48 | 1.5.2 | Content Page #1 |  | 1d? | 2016-10-24 | 2016-10-24 | 37FF | 12d |  | 8h |
| 49 | 1.5.3 | Content Page #2 |  | 1d? | 2016-11-03 | 2016-11-03 | 38FF | 38d |  | 8h |
| 50 | 1.5.4 | Content Page #3 |  | 1d? | 2016-11-04 | 2016-11-04 | 39FF | 37d |  | 8h |
| 51 | 1.5.5 | Author Page |  | 1d? | 2016-10-20 | 2016-10-20 | 40FF | 14d |  | 4h |
| 52 | 1.5.6 | Contact Page |  | 1d? | 2016-11-10 | 2016-11-10 | 41FF | 33d |  | 4h |
| 53 | 1.5.7 | Search Page |  | 1d? | 2016-12-07 | 2016-12-07 | 42FF | 15d |  | 24h |
| 54 | 1.5.8 | Order Page |  | 1d? | 2016-12-06 | 2016-12-06 | 43FF | 16d |  | 16h |
| 55 | 1.5.9 | Tracking Page |  | 1d? | 2016-11-29 | 2016-11-30 | 44FF | 20.5d |  | 8h |
| 56 | 1.5.10 | Admin Page |  | 1d? | 2016-12-28 | 2016-12-28 | 45FF | 0d |  | 32h |
| 57 | 1.6 | **MILESTONE** |  | 34d | 2016-11-09 | 2016-12-28 |  | 0d |  |  |
| 58 | 1.6.1 | Finish of Analysis Phase | milestone | 0d | 2016-11-09 | 2016-11-09 | 2 | 29d |  |  |
| 59 | 1.6.2 | Finish of Design Phase | milestone | 0d | 2016-11-28 | 2016-11-28 | 13 | 17d |  |  |
| 60 | 1.6.3 | Finish of Development Phase | milestone | 0d | 2016-12-21 | 2016-12-21 | 24 | 5d |  |  |
| 61 | 1.6.4 | Finish of Testing Phase | milestone | 0d | 2016-12-28 | 2016-12-28 | 35 | 0d |  |  |
| 62 | 1.6.5 | Finish of BugFix Phase | milestone | 0d | 2016-12-28 | 2016-12-28 | 46 | 0d |  |  |
